# PRIMERA VERSIÓN_EDT_PM05

Schedule from MS Project, 2011-03-28 to 2011-07-11, A marks actual dates.
Hewlett-Packard

## Calendars

- Estándar: Mon-Fri 09:00-13:00, 15:00-19:00; Sat-Sun off. Exceptions (off unless hours are given): 2011-04-21 to 2011-04-22 (Semana Santa).

## Schedule

| ID | WBS | Task | Type | Duration | Start | Finish | Predecessors | Complete | Remaining | Total slack | Constraint |
| --- | --- | --- | --- | --- | --- | --- | --- | --- | --- | --- | --- |
| 1 | 1 | **Análisis y Diseño de la Arquitectura de Procesos de una pequeña minería- Proceso de Logística** |  | 74d | 2011-03-28 A | 2011-07-11 |  | 76% | 17.49d | 0d |  |
| 2 | 1.1 | **Inicio y Planificación** |  | 1d | 2011-03-28 A | 2011-03-28 A |  | 100% |  |  |  |
| 3 | 1.1.1 | Elaboración del Project Charter |  | 1d | 2011-03-28 A | 2011-03-28 A |  | 100% |  |  |  |
| 4 | 1.1.2 | Elaboración del Project Plan |  | 1d | 2011-03-28 A | 2011-03-28 A |  | 100% |  |  |  |
| 5 | 1.2 | **Elaboración de entregables** |  | 60d | 2011-03-29 A | 2011-06-22 |  | 91% | 5.28d | 13d |  |
| 6 | 1.2.1 | Investigación Inicial |  | 3d | 2011-03-29 A | 2011-03-31 A | 4 | 100% |  |  |  |
| 7 | 1.2.2 | Elaboración de Cronograma |  | 1d | 2011-03-30 A | 2011-03-30 A | 6SS | 100% |  |  | start no earlier than 2011-03-30 |
| 8 | 1.2.3 | Elaboración de la Matriz de Riesgos |  | 2d | 2011-03-30 A | 2011-03-31 A | 7SS | 100% |  |  |  |
| 9 | 1.2.4 | Elaboración de los primeros dos capítulos |  | 4d | 2011-04-01 A | 2011-04-06 A | 8 | 100% |  |  |  |
| 10 | 1.2.5 | **Creación de Artefactos Base** |  | 5.5d | 2011-04-04 A | 2011-04-11 A |  | 100% |  |  |  |
| 11 | 1.2.5.1 | Diagrama de la Organización |  | 0.5d | 2011-04-04 A | 2011-04-04 A | 9SS | 100% |  |  | start no earlier than 2011-04-04 |
| 12 | 1.2.5.2 | Stakeholders Empresariales |  | 0.5d | 2011-04-04 A | 2011-04-04 A | 11 | 100% |  |  |  |
| 13 | 1.2.5.3 | Diagrama de Objetivos |  | 1d | 2011-04-04 A | 2011-04-04 A | 11SS | 100% |  |  |  |
| 14 | 1.2.5.4 | Mapa de Procesos |  | 0.5d | 2011-04-05 A | 2011-04-05 A | 13 | 100% |  |  |  |
| 15 | 1.2.5.5 | Justificación de Procesos - Objetivos |  | 1.5d | 2011-04-05 A | 2011-04-06 A | 12, 13 | 100% |  |  | start no earlier than 2011-04-05 |
| 16 | 1.2.5.6 | Integración de artefactos inciales |  | 3d | 2011-04-06 A | 2011-04-11 A | 15, 12 | 100% |  |  |  |
| 17 | 1.2.5.7 | Primera reunión con el cliente |  | 2h | 2011-04-08 A | 2011-04-08 A |  | 100% |  |  | finish no earlier than 2011-04-08 |
| 18 | 1.2.5.8 | Primer envío a QA | milestone | 0d | 2011-04-11 A | 2011-04-11 A |  | 100% |  |  | start no earlier than 2011-04-11 |
| 19 | 1.2.6 | **Diseño de Procesos** |  | 53.5d | 2011-04-06 A | 2011-06-22 |  | 89% | 6.06d | 13d |  |
| 20 | 1.2.6.1 | Elaboración de la Memoria Parcial |  | 3d | 2011-04-06 A | 2011-04-11 A | 15 | 100% |  |  |  |
| 21 | 1.2.6.2 | Primera Revisión de Memoria Parcial |  | 2d | 2011-04-13 A | 2011-04-14 A | 20 | 100% |  |  | finish no earlier than 2011-04-14 |
| 22 | 1.2.6.3 | Segunda reunión con el cliente |  | 0.5h | 2011-04-15 A | 2011-04-15 A |  | 100% |  |  | start no earlier than 2011-04-15 |
| 23 | 1.2.6.4 | Corección de Memoria Parcial |  | 2d | 2011-04-15 A | 2011-04-18 A | 21 | 100% |  |  |  |
| 24 | 1.2.6.5 | Entrega de Memoria Parcial | milestone | 0d | 2011-04-18 A | 2011-04-18 A | 23 | 100% |  |  | start no earlier than 2011-04-18 |
| 25 | 1.2.6.6 | Exposición Memoria Parcial |  | 1d | 2011-04-25 A | 2011-04-25 A | 24 | 100% |  |  | start no earlier than 2011-04-25 |
| 26 | 1.2.6.7 | Diagramación de Procesos de Primer Nivel |  | 2d | 2011-04-20 A | 2011-04-25 A |  | 100% |  |  | start no earlier than 2011-04-20 |

| ID | WBS | Task | Type | Duration | Start | Finish | Predecessors | Complete | Remaining | Actual finish | Total slack | Free slack | Constraint |
| --- | --- | --- | --- | --- | --- | --- | --- | --- | --- | --- | --- | --- | --- |
| 27 | 1.2.6.8 | **Segundo envío a QA** |  | 0d | 2011-05-05 A | 2011-05-05 |  | 100% |  | 2011-05-23 |  |  |  |
| 28 | 1.2.6.8.1 | Primer ciclo QA |  | 1d | 2011-05-05 A | 2011-05-05 A |  | 100% |  |  |  |  |  |
| 29 | 1.2.6.8.2 | Segundo ciclo QA |  | 1d | 2011-05-18 A | 2011-05-18 A | 28 | 100% |  |  |  |  | start no earlier than 2011-05-18 |
| 30 | 1.2.6.8.3 | Tercer ciclo QA |  | 1d | 2011-05-23 A | 2011-05-23 A | 29 | 100% |  |  |  |  | start no earlier than 2011-05-23 |
| 31 | 1.2.6.9 | Diagramación de Procesos de Segundo Nivel |  | 34d | 2011-05-03 A | 2011-06-17 |  | 80% | 6.8d |  | 16d |  | finish no earlier than 2011-06-17 |
| 32 | 1.2.6.10 | **Tercer envío a QA** |  | 18d | 2011-05-30 A | 2011-06-22 A |  | 100% |  |  |  |  |  |
| 33 | 1.2.6.10.1 | **Entrega 1** |  | 1d | 2011-05-30 A | 2011-05-30 |  | 100% |  | 2011-06-08 |  |  |  |
| 34 | 1.2.6.10.1.1 | Primer ciclo QA |  | 1d | 2011-05-30 A | 2011-05-30 A |  | 100% |  |  |  |  |  |
| 35 | 1.2.6.10.1.2 | Segundo Ciclo QA |  | 1d | 2011-06-06 A | 2011-06-06 A | 34 | 100% |  |  |  |  | start no earlier than 2011-06-06 |
| 36 | 1.2.6.10.1.3 | Tercer ciclo QA |  | 1d | 2011-06-08 A | 2011-06-08 A | 35 | 100% |  |  |  |  | start no earlier than 2011-06-08 |
| 37 | 1.2.6.10.2 | **Entrega 2** |  | 1d | 2011-06-06 A | 2011-06-06 | 33 | 100% |  | 2011-06-13 |  |  |  |
| 38 | 1.2.6.10.2.1 | Primer ciclo QA |  | 1d | 2011-06-06 A | 2011-06-06 A |  | 100% |  |  |  |  | start no earlier than 2011-06-06 |
| 39 | 1.2.6.10.2.2 | Segundo ciclo QA |  | 1d | 2011-06-10 A | 2011-06-10 A | 38 | 100% |  |  |  |  | start no earlier than 2011-06-10 |
| 40 | 1.2.6.10.2.3 | Tercer ciclo QA |  | 1d | 2011-06-13 A | 2011-06-13 A | 39 | 100% |  |  |  |  | start no earlier than 2011-06-13 |
| 41 | 1.2.6.10.3 | **Entrega 3** |  | 1d | 2011-06-13 A | 2011-06-13 | 37 | 100% |  | 2011-06-20 |  |  |  |
| 42 | 1.2.6.10.3.1 | Primer ciclo QA |  | 1d | 2011-06-13 A | 2011-06-13 A |  | 100% |  |  |  |  |  |
| 43 | 1.2.6.10.3.2 | Segundo ciclo QA |  | 1d | 2011-06-17 A | 2011-06-17 A | 42 | 100% |  |  |  |  | start no earlier than 2011-06-17 |
| 44 | 1.2.6.10.3.3 | Tercer ciclo QA |  | 1d | 2011-06-20 A | 2011-06-20 A | 43 | 100% |  |  |  |  | start no earlier than 2011-06-20 |
| 45 | 1.2.6.10.4 | **Entrega 4** |  | 0d | 2011-06-17 A | 2011-06-17 |  | 100% |  | 2011-06-22 |  |  |  |
| 46 | 1.2.6.10.4.1 | Primer ciclo QA |  | 1d | 2011-06-17 A | 2011-06-17 A |  | 100% |  |  |  |  |  |
| 47 | 1.2.6.10.4.2 | Segundo ciclo QA |  | 1d | 2011-06-20 A | 2011-06-20 A |  | 100% |  |  |  |  | start no earlier than 2011-06-20 |
| 48 | 1.2.6.10.4.3 | Tercer ciclo QA |  | 1d | 2011-06-22 A | 2011-06-22 A |  | 100% |  |  |  |  | start no earlier than 2011-06-22 |
| 49 | 1.2.6.11 | Integración de Procesos de Primer Nivel |  | 1d | 2011-06-17 A | 2011-06-17 A |  | 100% |  |  |  |  | start no earlier than 2011-06-17 |
| 50 | 1.3 | **Cierre de ciclo** |  | 16d | 2011-06-20 A | 2011-07-11 |  | 10% | 14.4d |  | 0d |  |  |
| 51 | 1.3.1 | **Memoria Parcial** |  | 7d | 2011-06-20 A | 2011-06-28 |  | 26% | 5.2d |  | 9d |  |  |
| 52 | 1.3.1.1 | Elaboración de la versión final de la Memoria Parcial |  | 4d | 2011-06-20 A | 2011-06-23 | 49 | 45% | 2.2d |  | 9d | 0d | finish no earlier than 2011-06-22 |
| 53 | 1.3.1.2 | Segunda Revisión de la Memoria Parcial | milestone | 0d | 2011-06-23 | 2011-06-23 | 52 |  |  |  | 9d | 0d | start no earlier than 2011-06-22 |
| 54 | 1.3.1.3 | Corección de Memoria Parcial |  | 3d | 2011-06-24 | 2011-06-28 | 53 |  |  |  | 9d |  |  |
| 55 | 1.3.1.4 | Entrega Memoria Parcial | milestone | 0d | 2011-06-27 | 2011-06-27 |  |  |  |  | 1d | 0d | start no earlier than 2011-06-27 |

| ID | WBS | Task | Duration | Start | Finish | Predecessors | Total slack | Constraint |
| --- | --- | --- | --- | --- | --- | --- | --- | --- |
| 56 | 1.3.2 | **Presentación Final** | 11d | 2011-06-27 | 2011-07-11 |  | 0d |  |
| 57 | 1.3.2.1 | Preparación de la diapositiva final | 10d | 2011-06-27 | 2011-07-08 | 55 | 1d | start no earlier than 2011-06-27 |
| 58 | 1.3.2.2 | Exposición | 1d | 2011-07-11 | 2011-07-11 |  | 0d | start no earlier than 2011-07-11 |
